# Spring Testing Schedule

Schedule from ProjectLibre, 2026-10-21 to 2027-05-04.

## Calendars

- Standard: Mon-Fri 08:00-12:00, 13:00-17:00; Sat-Sun off. Exceptions (off unless hours are given): 2026-11-22 to 2026-11-27, 2026-12-07 to 2027-01-06.

## Resources

| Resource |
| --- |
| Unassigned |

## Schedule

| ID | WBS | Task | Type | Duration | Start | Finish | Predecessors | Complete | Baseline start | Baseline finish | Baseline 1 start | Baseline 1 finish | Constraint | Deadline |
| --- | --- | --- | --- | --- | --- | --- | --- | --- | --- | --- | --- | --- | --- | --- |
| 1 | 1 | **Project Complete** |  | 95d | 2026-10-21 | 2027-04-08 |  | 14% | 2026-10-21 | 2027-04-12 | 2026-10-21 | 2027-04-13 |  |  |
| 2 | 1.1 | **Testing Design Complete** |  | 33d | 2026-10-21 | 2027-01-12 |  | 47% | 2026-10-21 | 2027-01-26 | 2026-10-21 | 2027-01-26 |  |  |
| 3 | 1.1.1 | **Testing Plans** |  | 13d | 2026-10-21 | 2026-11-06 |  | 100% | 2026-10-21 | 2026-11-06 | 2026-10-21 | 2026-11-06 |  | 2026-11-06 |
| 4 | 1.1.1.1 | Magnetometer Test Plan |  | 13d | 2026-10-21 | 2026-11-06 |  | 100% | 2026-10-21 | 2026-11-06 | 2026-10-21 | 2026-11-06 |  |  |
| 5 | 1.1.1.2 | Instrument Test Plan |  | 13d | 2026-10-21 | 2026-11-06 |  | 100% | 2026-10-21 | 2026-11-06 | 2026-10-21 | 2026-11-06 |  |  |
| 6 | 1.1.1.3 | Link Test Plan |  | 13d | 2026-10-21 | 2026-11-06 |  | 100% | 2026-10-21 | 2026-11-06 | 2026-10-21 | 2026-11-06 |  |  |
| 7 | 1.1.1.4 | Flatsat Test Plan |  | 13d | 2026-10-21 | 2026-11-06 |  | 100% | 2026-10-21 | 2026-11-06 | 2026-10-21 | 2026-11-06 |  |  |
| 8 | 1.1.1.5 | Full Bill of Materials |  | 13d | 2026-10-21 | 2026-11-06 |  | 100% | 2026-10-21 | 2026-11-06 | 2026-10-21 | 2026-11-06 |  |  |
| 9 | 1.1.2 | DR 2, Session 1 |  | 0d | 2026-11-09 | 2026-11-09 |  | 100% | 2026-11-09 | 2026-11-09 | 2026-11-09 | 2026-11-09 | start no earlier than 2026-11-09 |  |
| 10 | 1.1.3 | DR 2, Session 2 | milestone | 0d | 2026-11-16 | 2026-11-16 | 3 | 100% | 2026-11-16 | 2026-11-16 | 2026-11-16 | 2026-11-16 | start no earlier than 2026-11-16 |  |
| 11 | 1.1.2 | **Manufacturing Plans** |  | 9d | 2026-11-06 | 2026-11-18 |  | 82% | 2026-11-09 | 2026-11-18 | 2026-11-09 | 2026-11-18 |  | 2026-11-18 |
| 12 | 1.1.2.1 | Magnetometer Manufacturing Plan |  | 8d | 2026-11-06 | 2026-11-18 | 4 | 87% | 2026-11-09 | 2026-11-18 | 2026-11-09 | 2026-11-18 | finish no later than 2026-11-18 |  |
| 13 | 1.1.2.2 | Instrument Manufacturing Plan |  | 9d | 2026-11-06 | 2026-11-18 | 5 | 80% | 2026-11-09 | 2026-11-18 | 2026-11-09 | 2026-11-18 | finish no later than 2026-11-18 |  |
| 14 | 1.1.2.3 | Link Manufacturing Plan |  | 9d | 2026-11-06 | 2026-11-18 | 6 | 80% | 2026-11-09 | 2026-11-18 | 2026-11-09 | 2026-11-18 | finish no later than 2026-11-18 |  |
| 15 | 1.1.2.4 | Flatsat Manufacturing Plan |  | 9d | 2026-11-06 | 2026-11-18 | 7 | 80% | 2026-11-09 | 2026-11-18 | 2026-11-09 | 2026-11-18 | finish no later than 2026-11-18 |  |
| 16 | 1.1.3 | **Software Development** |  | 20d | 2026-11-09 | 2027-01-12 |  |  | 2026-11-09 | 2027-01-26 | 2026-11-09 | 2027-01-26 |  |  |
| 17 | 1.1.3.1 | Instrument Algorithms |  | 20d | 2026-11-09 | 2027-01-12 | 5 |  | 2026-11-09 | 2027-01-26 | 2026-11-09 | 2027-01-26 |  |  |
| 18 | 1.1.3.2 | CDH Algorithms |  | 20d | 2026-11-09 | 2027-01-12 | 7 |  | 2026-11-09 | 2027-01-26 | 2026-11-09 | 2027-01-26 |  |  |
| 19 | 1.1.3.3 | Power Algorithms |  | 20d | 2026-11-09 | 2027-01-12 | 7 |  | 2026-11-09 | 2027-01-26 | 2026-11-09 | 2027-01-19 |  |  |
| 20 | 1.1.3.4 | GNC Algorithms |  | 20d | 2026-11-09 | 2027-01-12 | 4 |  | 2026-11-09 | 2027-01-26 | 2026-11-09 | 2027-01-19 |  |  |
| 21 | 1.1.3.5 | Comms Algorithms |  | 20d | 2026-11-09 | 2027-01-12 | 6 |  | 2026-11-09 | 2027-01-26 | 2026-11-09 | 2027-01-26 |  |  |
| 22 | 1.2 | **Procurement** |  | 22.25d | 2026-11-09 | 2027-01-15 |  | 2% | 2026-11-19 | 2027-02-03 | 2026-11-19 | 2027-02-03 |  |  |
| 23 | 1.2.1 | **Magnetometer** |  | 15.25d | 2026-11-18 | 2027-01-15 |  | 2% | 2026-11-19 | 2027-01-15 | 2026-11-19 | 2027-01-15 |  |  |
| 24 | 1.2.1.1 | Magnetometer |  | 10d | 2026-11-18 | 2027-01-07 | 12 | 10% | 2026-11-19 | 2027-01-08 | 2026-11-19 | 2027-01-08 |  | 2027-01-15 |
| 25 | 1.2.1.2 | Wiring |  | 5d | 2026-11-18 | 2026-12-02 | 12 |  | 2026-11-19 | 2026-12-02 | 2026-11-19 | 2026-12-02 |  | 2027-01-27 |
| 26 | 1.2.1.3 | Arduino |  | 10d | 2026-11-18 | 2027-01-08 | 12 |  | 2026-11-19 | 2027-01-08 | 2026-11-19 | 2027-01-08 |  | 2027-01-22 |
| 27 | 1.2.1.4 | Wood for Test Stand |  | 5d | 2026-11-18 | 2026-12-02 | 12 |  | 2026-11-19 | 2026-12-02 | 2026-11-19 | 2026-12-02 |  | 2027-01-21 |
| 28 | 1.2.1.5 | DB9 to USB Cable |  | 5d | 2026-11-18 | 2026-12-02 | 12 |  | 2026-11-19 | 2026-11-20 | 2026-11-19 | 2026-11-20 |  |  |
| 29 | 1.2.1.6 | Additional Power Supply |  | 15d | 2026-11-18 | 2027-01-15 | 12 |  | 2026-11-19 | 2027-01-15 | 2026-11-19 | 2027-01-15 |  | 2027-01-18 |

Notes:
- 24: Ordered
- 25: NLT 27 Jan
- 26: NLT 22 Jan
- 27: NLT 21 Jan
- 28: NLT 19 Nov
- 29: NLT 17 Jan

| ID | WBS | Task | Duration | Start | Finish | Predecessors | Complete | Baseline start | Baseline finish | Baseline 1 start | Baseline 1 finish | Constraint | Deadline |
| --- | --- | --- | --- | --- | --- | --- | --- | --- | --- | --- | --- | --- | --- |
| 30 | 1.2.2 | **Instrument** | 18d | 2026-11-09 | 2027-01-08 |  | 3% | 2026-11-19 | 2027-02-03 | 2026-11-19 | 2027-02-03 |  |  |
| 31 | 1.2.2.1 | Event Camera | 18d | 2026-11-09 | 2027-01-08 | 5 | 10% | 2026-11-19 | 2027-02-03 | 2026-11-19 | 2027-02-03 | start no later than 2026-11-09 |  |
| 32 | 1.2.2.2 | Lens | 7d | 2026-11-18 | 2026-12-03 | 5 | 10% | 2026-11-19 | 2026-12-04 | 2026-11-19 | 2026-12-04 |  | 2027-01-19 |
| 33 | 1.2.2.3 | Camera Tripod | 5d | 2026-11-19 | 2026-12-02 | 13 |  | 2026-11-19 | 2026-12-02 | 2026-11-19 | 2026-12-02 |  | 2027-01-19 |
| 34 | 1.2.2.4 | Standard Camera | 5d | 2026-11-19 | 2026-12-02 | 13 |  | 2026-11-19 | 2026-12-02 | 2026-11-19 | 2026-12-02 |  | 2027-02-01 |
| 35 | 1.2.2.5 | Tarp | 5d | 2026-11-19 | 2026-12-02 | 13 |  | 2026-11-19 | 2026-12-02 | 2026-11-19 | 2026-12-02 |  | 2027-02-01 |
| 36 | 1.2.2.6 | Event Software | 10d | 2026-11-18 | 2027-01-07 | 5 |  | 2026-11-19 | 2027-01-08 | 2026-11-19 | 2027-01-08 |  | 2027-01-13 |
| 37 | 1.2.2.7 | Lighting | 5d | 2026-11-19 | 2026-12-02 | 13 |  | 2026-11-19 | 2026-12-02 | 2026-11-19 | 2026-12-02 |  | 2027-01-18 |
| 38 | 1.2.2.8 | LED | 5d | 2026-11-19 | 2026-12-02 | 13 |  | 2026-11-19 | 2026-12-02 | 2026-11-19 | 2026-12-02 |  | 2027-01-18 |
| 39 | 1.2.2.9 | Arduino | 10d | 2026-11-19 | 2027-01-08 | 13 |  | 2026-11-19 | 2027-01-08 | 2026-11-19 | 2027-01-08 |  | 2027-01-13 |
| 40 | 1.2.2.10 | IMU | 10d | 2026-11-19 | 2027-01-08 | 13 |  | 2026-11-19 | 2027-01-08 | 2026-11-19 | 2027-01-08 |  | 2027-01-13 |
| 41 | 1.2.2.11 | Nerf Gun and Darts | 10d | 2026-11-19 | 2027-01-08 | 13 |  | 2026-11-19 | 2027-01-08 | 2026-11-19 | 2027-01-08 |  | 2027-02-05 |
| 42 | 1.2.2.12 | Misc Electronics | 5d | 2026-11-19 | 2026-12-02 | 13 |  | 2026-11-19 | 2026-12-02 | 2026-11-19 | 2026-12-02 |  | 2027-01-18 |
| 43 | 1.2.3 | **Link** | 10d | 2026-11-19 | 2027-01-08 |  |  | 2026-11-19 | 2027-01-08 | 2026-11-19 | 2027-01-08 |  |  |
| 44 | 1.2.3.1 | Lime SDR Mini | 10d | 2026-11-19 | 2027-01-08 | 14 |  | 2026-11-19 | 2027-01-08 | 2026-11-19 | 2027-01-08 |  | 2026-12-07 |
| 45 | 1.2.3.2 | 2X2 Patch Array | 10d | 2026-11-19 | 2027-01-08 | 14 |  | 2026-11-19 | 2027-01-08 | 2026-11-19 | 2027-01-08 |  | 2026-12-07 |
| 46 | 1.2.3.3 | Dipole | 10d | 2026-11-19 | 2027-01-08 | 14 |  | 2026-11-19 | 2027-01-08 | 2026-11-19 | 2027-01-08 |  | 2026-12-07 |
| 47 | 1.2.3.4 | Computer | 10d | 2026-11-19 | 2027-01-08 | 14 |  | 2026-11-19 | 2027-01-08 | 2026-11-19 | 2027-01-08 |  | 2026-12-07 |
| 48 | 1.2.4 | **Flatsat** | 20d | 2026-11-09 | 2027-01-12 |  | 3% | 2026-11-19 | 2027-01-15 | 2026-11-19 | 2027-01-15 |  |  |
| 49 | 1.2.4.1 | Aluminum Plate | 3d | 2026-11-18 | 2026-11-20 |  | 100% | 2026-11-19 | 2027-01-15 | 2026-11-19 | 2027-01-15 |  |  |
| 50 | 1.2.4.2 | USB, Power, and BNC Cables | 5d | 2026-11-19 | 2026-12-02 | 15 |  | 2026-11-19 | 2026-12-02 | 2026-11-19 | 2026-12-02 |  | 2026-12-04 |
| 51 | 1.2.4.3 | Battery Pack | 15d | 2026-11-09 | 2026-12-04 | 7 |  |  |  |  |  |  | 2026-11-20 |
| 52 | 1.2.4.4 | Thermocouples | 15d | 2026-11-09 | 2026-12-04 | 7 |  |  |  |  |  |  | 2026-11-20 |
| 53 | 1.2.4.5 | EPS Board | 20d | 2026-11-09 | 2027-01-12 | 7 |  | 2026-11-19 | 2027-01-15 | 2026-11-19 | 2027-01-15 |  | 2026-11-20 |
| 54 | 1.2.4.6 | CDH Computer | 15d | 2026-11-09 | 2026-12-04 | 7 |  | 2026-11-19 | 2026-12-02 | 2026-11-19 | 2026-12-02 |  | 2026-12-04 |
| 55 | 1.2.4.7 | Structure Materials | 5d | 2026-11-19 | 2026-12-02 | 15 |  | 2026-11-19 | 2026-12-02 | 2026-11-19 | 2026-12-02 |  | 2026-12-02 |
| 56 | 1.2.4.8 | Harnesses | 5d | 2026-11-19 | 2026-12-02 | 15 |  | 2026-11-19 | 2026-12-02 | 2026-11-19 | 2026-12-02 |  | 2026-12-04 |
| 57 | 1.2.4.9 | Power Supply | 10d | 2026-11-19 | 2027-01-08 | 15 |  | 2026-11-19 | 2027-01-15 | 2026-11-19 | 2027-01-15 |  | 2026-11-20 |

Notes:
- 31: NLT 19 Nov
- 32: NLT 19 Jan
- 33: NLT 19 Jan
- 34: NLT 01 Feb
- 35: NLT 01 Feb
- 36: NLT 13 Jan
- 37: NLT 18 Jan
- 38: NLT 18 Jan
- 39: NLT 13 Jan
- 40: NLT 13 Jan
- 41: NLT 05 Feb
- 42: NLT 18 Jan
- 44: NLT 07 Dec
- 45: NLT 07 Dec
- 46: NLT 07 Dec
- 47: NLT 07 Dec
- 49: Aquired 11-13-26
- 50: NLT 04 Dec
- 51: NLT 20 Nov
- 52: NLT 20 Nov
- 53: NLT 20 Nov
- 54: NLT 04 Dec
- 55: NLT 02 Dec
- 56: NLT 04 Dec
- 57: NLT 20 Nov

| ID | WBS | Task | Duration | Start | Finish | Predecessors | Baseline start | Baseline finish | Baseline 1 start | Baseline 1 finish |
| --- | --- | --- | --- | --- | --- | --- | --- | --- | --- | --- |
| 58 | 1.3 | **Fabrication** | 17d | 2026-12-03 | 2027-01-26 |  | 2027-01-11 | 2027-02-12 | 2027-01-11 | 2027-02-12 |
| 59 | 1.3.1 | **Magnetometer** | 7d | 2027-01-08 | 2027-01-18 |  | 2027-01-18 | 2027-01-26 | 2027-01-18 | 2027-01-26 |
| 60 | 1.3.1.1 | Magnetometer Test Stand | 7d | 2027-01-08 | 2027-01-18 | 24, 27 | 2027-01-18 | 2027-01-26 | 2027-01-18 | 2027-01-26 |
| 61 | 1.3.2 | **Instrument** | 12d | 2027-01-11 | 2027-01-26 |  | 2027-02-04 | 2027-02-12 | 2027-02-04 | 2027-02-12 |
| 62 | 1.3.2.1 | Event Camera Stand | 5d | 2027-01-11 | 2027-01-15 | 31, 32, 33 | 2027-02-04 | 2027-02-10 | 2027-02-04 | 2027-02-10 |
| 63 | 1.3.2.2 | Moving Light Source Setup | 7d | 2027-01-18 | 2027-01-26 | 36, 38, 39, 40, 42, 62 | 2027-02-04 | 2027-02-12 | 2027-02-04 | 2027-02-12 |
| 64 | 1.3.2.3 | Projectile Testing Setup | 7d | 2027-01-18 | 2027-01-26 | 34, 35, 36, 37, 41, 42, 62 |  |  |  |  |
| 65 | 1.3.3 | **Link** | 7d | 2027-01-11 | 2027-01-19 |  | 2027-01-11 | 2027-01-19 | 2027-01-11 | 2027-01-19 |
| 66 | 1.3.3.1 | Antenna | 7d | 2027-01-11 | 2027-01-19 | 44, 45, 46, 47 | 2027-01-11 | 2027-01-19 | 2027-01-11 | 2027-01-19 |
| 67 | 1.3.4 | **Flatsat** | 14d | 2026-12-03 | 2027-01-21 |  | 2027-01-18 | 2027-01-29 | 2027-01-18 | 2027-01-29 |
| 68 | 1.3.4.1 | Enclosure | 10d | 2026-12-03 | 2027-01-15 | 49, 55 | 2027-01-18 | 2027-01-29 | 2027-01-18 | 2027-01-29 |
| 69 | 1.3.4.2 | Power Electronics | 7d | 2027-01-13 | 2027-01-21 | 50, 51, 53, 57 | 2027-01-18 | 2027-01-26 | 2027-01-18 | 2027-01-26 |
| 70 | 1.3.4.3 | CDH Electronics | 7d | 2027-01-11 | 2027-01-19 | 50, 52, 54, 57 |  |  |  |  |
| 71 | 1.4 | **Component Testing** | 16d | 2026-12-03 | 2027-01-25 |  | 2026-12-03 | 2027-02-05 | 2026-12-03 | 2027-02-05 |
| 72 | 1.4.1 | **Magnetometer** | 8.25d | 2027-01-08 | 2027-01-20 |  | 2027-01-11 | 2027-01-19 | 2027-01-11 | 2027-01-19 |
| 73 | 1.4.1.1 | Inspect Magnetometer | 2d | 2027-01-08 | 2027-01-11 | 24 | 2027-01-11 | 2027-01-12 | 2027-01-11 | 2027-01-12 |
| 74 | 1.4.1.2 | Inspect Power Supply | 2d | 2027-01-15 | 2027-01-19 | 29 | 2027-01-18 | 2027-01-19 | 2027-01-18 | 2027-01-19 |
| 75 | 1.4.1.3 | Inspect other electronics | 2d | 2027-01-08 | 2027-01-12 | 25, 26, 28 | 2027-01-11 | 2027-01-12 | 2027-01-11 | 2027-01-12 |
| 76 | 1.4.1.4 | Calibration | 3d | 2027-01-15 | 2027-01-20 | 24, 25, 26, 28, 29 |  |  |  |  |
| 77 | 1.4.2 | **Instrument** | 14d | 2026-12-03 | 2027-01-21 |  | 2026-12-03 | 2027-02-05 | 2026-12-03 | 2027-02-05 |
| 78 | 1.4.2.1 | Inpect Event Camera | 7d | 2027-01-11 | 2027-01-19 | 31 | 2027-02-04 | 2027-02-05 | 2027-02-04 | 2027-02-05 |
| 79 | 1.4.2.2 | Verify Event Camera works with software / laptop | 2d | 2027-01-20 | 2027-01-21 | 36, 78 | 2027-01-11 | 2027-01-12 | 2027-01-11 | 2027-01-12 |
| 80 | 1.4.2.3 | Inspect Lens | 2d | 2026-12-04 | 2026-12-07 | 32 | 2026-12-07 | 2027-01-07 | 2026-12-07 | 2027-01-07 |
| 81 | 1.4.2.4 | Inspect other electronics | 2d | 2026-12-03 | 2026-12-04 | 37, 38, 42 | 2026-12-03 | 2026-12-04 | 2026-12-03 | 2026-12-04 |
| 82 | 1.4.2.5 | Inspect Arduino | 2d | 2027-01-11 | 2027-01-12 | 39 | 2027-01-11 | 2027-01-12 | 2027-01-11 | 2027-01-12 |
| 83 | 1.4.2.6 | Inspect IMU | 2d | 2027-01-11 | 2027-01-12 | 40 | 2027-01-11 | 2027-01-12 | 2027-01-11 | 2027-01-12 |

| ID | WBS | Task | Duration | Start | Finish | Predecessors | Baseline start | Baseline finish | Baseline 1 start | Baseline 1 finish | Deadline |
| --- | --- | --- | --- | --- | --- | --- | --- | --- | --- | --- | --- |
| 84 | 1.4.3 | **Link** | 11d | 2027-01-11 | 2027-01-25 |  | 2027-01-11 | 2027-01-21 | 2027-01-11 | 2027-01-21 |  |
| 85 | 1.4.3.1 | Inspect SDR Mini | 2d | 2027-01-11 | 2027-01-12 | 44 | 2027-01-11 | 2027-01-12 | 2027-01-11 | 2027-01-12 |  |
| 86 | 1.4.3.2 | Inspect Patch Array | 2d | 2027-01-11 | 2027-01-12 | 45 | 2027-01-11 | 2027-01-12 | 2027-01-11 | 2027-01-12 |  |
| 87 | 1.4.3.3 | Inspect Fabricated Antenna | 2d | 2027-01-20 | 2027-01-21 | 66 | 2027-01-20 | 2027-01-21 | 2027-01-20 | 2027-01-21 |  |
| 88 | 1.4.3.4 | Inspect Dipole | 2d | 2027-01-11 | 2027-01-12 | 46 | 2027-01-11 | 2027-01-12 | 2027-01-11 | 2027-01-12 |  |
| 89 | 1.4.3.5 | Confirm Computer Reads Signal | 2d | 2027-01-22 | 2027-01-25 | 85, 86, 87, 88 |  |  |  |  |  |
| 90 | 1.4.4 | **Flatsat** | 9d | 2026-12-03 | 2027-01-14 |  | 2026-12-03 | 2027-01-19 | 2026-12-03 | 2027-01-19 |  |
| 91 | 1.4.4.1 | Inspect EPS | 2d | 2027-01-13 | 2027-01-14 | 53 | 2027-01-18 | 2027-01-19 | 2027-01-18 | 2027-01-19 |  |
| 92 | 1.4.4.2 | Inspect Battery | 2d | 2026-12-07 | 2027-01-07 | 51 |  |  |  |  |  |
| 93 | 1.4.4.3 | Inspect CDH computer | 2d | 2026-12-07 | 2027-01-07 | 54 | 2026-12-03 | 2026-12-04 | 2026-12-03 | 2026-12-04 |  |
| 94 | 1.4.4.4 | Inspect Power Supply | 2d | 2027-01-11 | 2027-01-12 | 57 | 2027-01-18 | 2027-01-19 | 2027-01-18 | 2027-01-19 |  |
| 95 | 1.4.4.5 | Verify Cable Continuity | 2d | 2026-12-03 | 2026-12-04 | 50, 56 |  |  |  |  |  |
| 96 | 1.4.4.6 | Inspect Thermocouples | 2d | 2026-12-07 | 2027-01-07 | 52 |  |  |  |  |  |
| 97 | 1.5 | **Subsystem Integration** | 21.75d | 2027-01-20 | 2027-02-18 |  | 2027-01-20 | 2027-02-26 | 2027-01-20 | 2027-02-26 |  |
| 98 | 1.5.1 | Magnetometer | 5d | 2027-01-20 | 2027-01-27 | 20, 60, 73, 74, 75, 76 | 2027-01-20 | 2027-01-26 | 2027-01-20 | 2027-01-26 | 2027-02-02 |
| 99 | 1.5.2 | Instrument | 15d | 2027-01-22 | 2027-02-11 | 17, 62, 78, 79, 80, 81, 82, 83 | 2027-02-08 | 2027-02-26 | 2027-02-08 | 2027-02-26 |  |
| 100 | 1.5.3 | Link | 10d | 2027-01-26 | 2027-02-08 | 21, 85, 86, 87, 88, 89 | 2027-01-22 | 2027-02-04 | 2027-01-27 | 2027-02-09 |  |
| 101 | 1.5.4 | Flatsat | 20d | 2027-01-22 | 2027-02-18 | 18, 19, 68, 69, 70, 91, 92, 93, 94, 95, 96 | 2027-01-20 | 2027-02-16 | 2027-01-20 | 2027-02-16 |  |
| 102 | 1.6 | **Subsystem Testing** | 32d | 2027-01-20 | 2027-03-04 |  | 2027-01-27 | 2027-03-16 | 2027-01-27 | 2027-03-16 |  |
| 103 | 1.6.1 | Magnetometer | 15d | 2027-01-27 | 2027-02-17 | 98 | 2027-01-27 | 2027-02-16 | 2027-01-27 | 2027-02-16 |  |
| 104 | 1.6.2 | **Instrument** | 7d | 2027-02-12 | 2027-02-22 |  | 2027-02-08 | 2027-02-26 | 2027-02-08 | 2027-02-26 |  |
| 105 | 1.6.2.1 | Test 1: Moving Light Source | 7d | 2027-02-12 | 2027-02-22 | 63, 99 |  |  |  |  |  |
| 106 | 1.6.2.2 | Test 2: Projectile Tracking | 7d | 2027-02-12 | 2027-02-22 | 64, 99 |  |  |  |  |  |
| 107 | 1.6.3 | Link | 15d | 2027-02-09 | 2027-03-01 | 100 | 2027-02-05 | 2027-02-25 | 2027-02-10 | 2027-03-02 |  |

Notes:
- 98: OR 01 Feb

| ID | WBS | Task | Type | Duration | Start | Finish | Predecessors | Baseline start | Baseline finish | Baseline 1 start | Baseline 1 finish | Constraint | Deadline |
| --- | --- | --- | --- | --- | --- | --- | --- | --- | --- | --- | --- | --- | --- |
| 108 | 1.6.4 | **Flatsat** |  | 32d | 2027-01-20 | 2027-03-04 |  | 2027-02-17 | 2027-03-16 | 2027-02-17 | 2027-03-16 |  |  |
| 109 | 1.6.4.1 | Test 1: Hardware Inspection |  | 5d | 2027-01-22 | 2027-01-28 | 15, 68, 69, 70, 91, 92, 93, 94, 95, 96 |  |  |  |  |  |  |
| 110 | 1.6.4.2 | Test 2: Memory Capacity and Transfer |  | 5d | 2027-01-20 | 2027-01-26 | 18, 70, 93, 95 |  |  |  |  |  |  |
| 111 | 1.6.4.3 | Test 3: Data Processing and Packetization |  | 5d | 2027-01-20 | 2027-01-26 | 18, 70, 93, 95 |  |  |  |  |  |  |
| 112 | 1.6.4.4 | Test 4: Operating Modes and Recovery |  | 5d | 2027-01-22 | 2027-01-28 | 18, 19, 69, 70, 91, 92, 93, 94, 96 |  |  |  |  |  |  |
| 113 | 1.6.4.5 | Test 5: Autonomous Integrated Multi-day Test |  | 10d | 2027-02-19 | 2027-03-04 | 101, 109, 110, 111, 112 |  |  |  |  |  |  |
| 114 | 1.7 | System Integration |  | 10d | 2027-03-05 | 2027-03-18 | 103, 105, 106, 107, 113 | 2027-03-17 | 2027-04-06 | 2027-03-17 | 2027-03-30 |  |  |
| 115 | 1.8 | System Test |  | 15d | 2027-03-19 | 2027-04-08 | 114 | 2027-04-07 | 2027-04-12 | 2027-03-31 | 2027-04-13 |  |  |
| 116 | 2 | Project Expo | milestone | 0d | 2027-04-15 | 2027-04-15 |  |  |  | 2027-04-15 | 2027-04-15 | start no earlier than 2027-04-15 |  |
| 117 | 4 | Hardware Breakdown |  | 8d | 2027-04-15 | 2027-04-26 | 116 |  |  | 2027-04-15 | 2027-04-26 | must finish on 2027-04-27 | 2027-04-27 |
| 118 | 5 | Final Report |  | 18d | 2027-04-09 | 2027-05-04 | 115 | 2027-04-15 | 2027-04-28 | 2027-04-14 | 2027-04-27 |  | 2027-05-04 |
